# Project Schedule

Schedule from MS Project, 2018-01-15 to 2018-08-17.
Conestoga College

## Calendars

- Standard: Mon-Fri 08:00-12:00, 13:00-17:00; Sat-Sun off.

## Schedule

| ID | WBS | Task | Type | Duration | Start | Finish | Total slack |
| --- | --- | --- | --- | --- | --- | --- | --- |
| 1 | 1 | **Air Hockey Robot** |  | 155d | 2018-01-15 | 2018-08-17 |  |
| 2 | 1.1 | **System Engineering** |  | 1d? | 2018-01-15 | 2018-01-15 | 154d |
| 3 | 1.1.1 | Requirements Freeze | milestone | 0d | 2018-01-15 | 2018-01-15 | 155d |
| 4 | 1.1.2 | Manual Control | milestone | 0d | 2018-01-15 | 2018-01-15 | 155d |
| 5 | 1.1.3 | Defense | milestone | 0d | 2018-01-15 | 2018-01-15 | 155d |
| 6 | 1.1.4 | Offense | milestone | 0d | 2018-01-15 | 2018-01-15 | 155d |
| 7 | 1.1.5 | Fully Integrated | milestone | 0d | 2018-01-15 | 2018-01-15 | 155d |
| 8 | 1.1.6 | Validation Complete | milestone | 0d | 2018-01-15 | 2018-01-15 | 155d |
| 9 | 1.1.7 | Design |  | 1d? | 2018-01-15 | 2018-01-15 | 154d |
| 10 | 1.1.8 | Integration |  | 1d? | 2018-01-15 | 2018-01-15 | 154d |
| 11 | 1.1.9 | Validation |  | 1d? | 2018-01-15 | 2018-01-15 | 154d |
| 12 | 1.2 | **Master Controller** |  | 1d? | 2018-01-15 | 2018-01-15 | 154d |
| 13 | 1.2.1 | Trajectory Prediction |  | 1d? | 2018-01-15 | 2018-01-15 | 154d |
| 14 | 1.2.2 | Supervisory Control |  | 1d? | 2018-01-15 | 2018-01-15 | 154d |
| 15 | 1.2.3 | Data Logging |  | 1d? | 2018-01-15 | 2018-01-15 | 154d |
| 16 | 1.2.4 | Control Strategy |  | 1d? | 2018-01-15 | 2018-01-15 | 154d |
| 17 | 1.3 | **Paddle Controller** |  | 1d? | 2018-01-15 | 2018-01-15 | 154d |
| 18 | 1.3.1 | Actuators |  | 1d? | 2018-01-15 | 2018-01-15 | 154d |
| 19 | 1.3.2 | Position Control |  | 1d? | 2018-01-15 | 2018-01-15 | 154d |
| 20 | 1.3.3 | Velocity Control |  | 1d? | 2018-01-15 | 2018-01-15 | 154d |
| 21 | 1.3.4 | Sensors |  | 1d? | 2018-01-15 | 2018-01-15 | 154d |
| 22 | 1.3.5 | Calibration and Diagnostic Routines |  | 1d? | 2018-01-15 | 2018-01-15 | 154d |
| 23 | 1.3.6 | Safety Control |  | 1d? | 2018-01-15 | 2018-01-15 | 154d |
| 24 | 1.3.7 | End of Travel Protection |  | 1d? | 2018-01-15 | 2018-01-15 | 154d |

| ID | WBS | Task | Duration | Start | Finish | Total slack |
| --- | --- | --- | --- | --- | --- | --- |
| 25 | 1.4 | **Puck Tracker** | 1d? | 2018-01-15 | 2018-01-15 | 154d |
| 26 | 1.4.1 | Object Detection | 1d? | 2018-01-15 | 2018-01-15 | 154d |
| 27 | 1.4.2 | Object Localization | 1d? | 2018-01-15 | 2018-01-15 | 154d |
| 28 | 1.4.3 | Velocity Calculation | 1d? | 2018-01-15 | 2018-01-15 | 154d |
| 29 | 1.4.4 | Calibration & Diagnostic Routines | 1d? | 2018-01-15 | 2018-01-15 | 154d |
| 30 | 1.5 | **User Interface** | 1d? | 2018-01-15 | 2018-01-15 | 154d |
| 31 | 1.5.1 | Visualization | 1d? | 2018-01-15 | 2018-01-15 | 154d |
| 32 | 1.5.2 | Manual Control | 1d? | 2018-01-15 | 2018-01-15 | 154d |
| 33 | 1.5.3 | Game Interface | 1d? | 2018-01-15 | 2018-01-15 | 154d |
| 34 | 1.5.4 | Diagnostics Interface | 1d? | 2018-01-15 | 2018-01-15 | 154d |
